# CC-MobileV1.5总体开发计划

Schedule from MS Project, 2009-04-21 to 2009-09-22.
Cool

## Calendars

- 标准: Mon-Fri 08:00-12:00, 13:00-17:00; Sat-Sun off.

## Resources

| Resource |
| --- |
| XuChen |
| PanQingjun |
| YangZhiyong |
| GaoJinsheng |
| PanQinjun |
| PanQingjun wuwenguang wangyinghua |
| 徐岑 |
| 吴文广 王映华 |
| 王映华 |
| wuwenguang panqingjun |
| wuwenguang |
| wangyinghua |
| PanQingjun wangyinghua wuwenguang |
| panqingjun wuwenguang |
| wuwenguang wangyinghua |

## Schedule

| ID | WBS | Task | Duration | Start | Finish | Predecessors | Total slack | Free slack | Constraint | Resources | Work |
| --- | --- | --- | --- | --- | --- | --- | --- | --- | --- | --- | --- |
| 1 | 1 | iphone-winksi开发 | 8d? | 2009-04-21 | 2009-04-30 |  | 51d |  | start no earlier than 2009-04-21 |  |  |
| 2 | 2 | 熟悉新的操作系统、开发环境、开发语言 | 4d? | 2009-04-21 | 2009-04-24 |  | 108d |  | start no earlier than 2009-04-21 | PanQingjun wangyinghua wuwenguang | 32h |
| 3 | 3 | 摸索iphone程序运行模式，后台处理策略 | 5d? | 2009-05-04 | 2009-05-08 |  | 93d | 0d | start no earlier than 2009-05-04 | PanQingjun wuwenguang wangyinghua | 40h |
| 4 | 4 | 研究iphone程序真机安装程序、调试程序方法 | 5d? | 2009-05-11 | 2009-05-15 | 3 | 93d |  |  | PanQingjun wangyinghua wuwenguang | 40h |
| 5 | 5 | 试验破解工具链toolchain安装、整合 | 5d? | 2009-05-11 | 2009-05-15 |  | 83d | 0d | start no earlier than 2009-05-11 | panqingjun wuwenguang | 40h |
| 6 | 6 | **平台开发调研** | 24d? | 2009-05-18 | 2009-06-18 | 5 | 69d |  |  |  | 396h |
| 7 | 6.1 | 研究iphone的电话侦听方法 | 8d? | 2009-05-18 | 2009-05-27 |  | 73d | 0d | finish no earlier than 2009-05-27 | wuwenguang panqingjun | 64h |
| 8 | 6.2 | 研究覆盖电话事件画面的方法 | 7d? | 2009-05-28 | 2009-06-05 | 7 | 73d | 0d |  | wuwenguang panqingjun | 56h |
| 9 | 6.3 | 研究iphone解锁和锁定屏幕功能供程序启动显示使用 | 3d | 2009-06-08 | 2009-06-10 | 8 | 73d | 0d | finish no earlier than 2009-06-10 | wuwenguang panqingjun [50%] | 12h |
| 10 | 6.4 | 研究iphone上UI设计功能 | 5d? | 2009-06-11 | 2009-06-17 |  | 70d |  | start no earlier than 2009-06-11 | wuwenguang | 40h |
| 11 | 6.5 | 研究iphone数据存储 | 4d? | 2009-05-18 | 2009-05-21 |  | 71d | 0d | finish no earlier than 2009-05-21 | wangyinghua | 32h |
| 12 | 6.6 | 文件存取功能 | 4d? | 2009-05-22 | 2009-05-27 | 11 | 71d | 0d | start no earlier than 2009-05-22 | wangyinghua | 32h |
| 13 | 6.7 | 电话本操作 | 5d? | 2009-05-28 | 2009-06-03 | 12 | 71d | 0d | start no earlier than 2009-05-28 | wangyinghua | 40h |
| 14 | 6.8 | 研究iphone短信收发功能 | 2d? | 2009-06-04 | 2009-06-05 | 13 | 71d | 0d |  | wangyinghua | 16h |
| 15 | 6.9 | 研究iphone网络链接功能 | 4d? | 2009-06-08 | 2009-06-11 | 14 | 71d | 0d |  | wangyinghua | 32h |
| 16 | 6.10 | 研究iphone触屏事件捕获功能、和屏幕位置放置方向判断功能 | 3d? | 2009-06-12 | 2009-06-16 | 15 | 71d |  |  | wangyinghua | 24h |
| 17 | 6.11 | 跟踪研究进展，协助公关技术壁垒 | 2d? | 2009-06-11 | 2009-06-12 | 9 | 73d |  |  | PanQingjun | 16h |
| 18 | 6.12 | 整理、确定调研成果，确认可行性 | 2d? | 2009-06-15 | 2009-06-16 |  | 69d | 0d | finish no earlier than 2009-06-16 | PanQingjun | 16h |
| 19 | 6.13 | 共同沟通、谈论技术点的研究成果，确认可行性 | 2d? | 2009-06-17 | 2009-06-18 | 18 | 69d |  |  | PanQingjun wuwenguang wangyinghua | 16h |
| 20 | 7 | **抽象层设计** | 18d? | 2009-06-19 | 2009-07-14 |  | 51d |  |  |  | 432h |
| 21 | 7.1 | MMI消息机制和资源申请 | 8d | 2009-06-19 | 2009-06-30 |  | 51d | 0d | start no earlier than 2009-06-19 | wuwenguang | 64h |
| 22 | 7.2 | push接口 | 5d? | 2009-07-01 | 2009-07-07 | 21 | 51d | 0d |  | wuwenguang | 40h |
| 23 | 7.3 | UI接口 | 5d? | 2009-07-08 | 2009-07-14 | 22 | 51d |  |  | wuwenguang | 40h |
| 24 | 7.4 | 文件系统 | 3d? | 2009-06-19 | 2009-06-23 |  | 51d | 0d | finish no earlier than 2009-06-23 | wangyinghua | 24h |
| 25 | 7.5 | 本地数据存取 | 5d? | 2009-06-24 | 2009-06-30 | 24 | 51d | 0d |  | wangyinghua | 40h |
| 26 | 7.6 | 电话本操作接口 | 5d? | 2009-07-01 | 2009-07-07 | 25 | 51d | 0d |  | wangyinghua | 40h |
| 27 | 7.7 | 短消息接口 | 5d? | 2009-07-08 | 2009-07-14 | 26 | 51d |  |  | wangyinghua | 40h |
| 28 | 7.8 | 电话接口设计 | 3d? | 2009-06-19 | 2009-06-23 |  | 51d | 0d | finish no earlier than 2009-06-23 | wangyinghua | 24h |
| 29 | 7.9 | 数据通讯接口 | 5d? | 2009-06-24 | 2009-06-30 | 28 | 51d | 0d |  | PanQingjun | 40h |
| 30 | 7.10 | 系统信息 | 5d? | 2009-07-01 | 2009-07-07 | 29 | 51d | 0d |  | PanQingjun | 40h |
| 31 | 7.11 | 多媒体功能 | 5d? | 2009-07-08 | 2009-07-14 | 30 | 51d |  |  | PanQingjun | 40h |

| ID | WBS | Task | Duration | Start | Finish | Predecessors | Total slack | Free slack | Constraint | Resources | Work |
| --- | --- | --- | --- | --- | --- | --- | --- | --- | --- | --- | --- |
| 32 | 8 | **抽象层编码** | 35d? | 2009-07-07 | 2009-08-24 |  | 21d |  |  | PanQingjun wuwenguang wangyinghua | 952h |
| 33 | 8.1 | 文件系统 | 3d? | 2009-07-07 | 2009-07-09 |  | 36d | 0d | finish no earlier than 2009-07-09 | wangyinghua | 24h |
| 34 | 8.2 | 本地数据存取 | 2d? | 2009-07-10 | 2009-07-13 | 33 | 22d | 0d | finish no earlier than 2009-07-13 | wangyinghua | 16h |
| 35 | 8.3 | 电话本操作 | 4d? | 2009-07-14 | 2009-07-17 | 34 | 22d | 0d | finish no earlier than 2009-07-17 | wangyinghua | 32h |
| 36 | 8.4 | 短消息接口 | 2d? | 2009-07-20 | 2009-07-21 | 35 | 22d | 0d | finish no earlier than 2009-07-21 | wangyinghua | 16h |
| 37 | 8.5 | 数据通讯接口 | 4d | 2009-07-22 | 2009-07-27 | 36 | 22d | 0d | finish no earlier than 2009-07-23 | wangyinghua | 32h |
| 38 | 8.6 | 定时器接口 | 1d? | 2009-07-28 | 2009-07-28 | 37 | 22d | 0d | start no earlier than 2009-07-17 | wangyinghua | 8h |
| 39 | 8.7 | 存储卡接口 | 1d? | 2009-07-29 | 2009-07-29 | 38 | 22d | 0d |  | wangyinghua | 8h |
| 40 | 8.8 | 获取用户姓名比较关键字 | 3d | 2009-07-30 | 2009-08-03 | 39 | 22d | 0d |  | wangyinghua | 24h |
| 41 | 8.9 | 动态内存管理 | 2d? | 2009-07-07 | 2009-07-08 |  | 22d | 0d | start no earlier than 2009-07-07 | wuwenguang | 16h |
| 42 | 8.10 | 消息通道 | 2d | 2009-07-09 | 2009-07-10 | 41 | 22d | 0d | start no earlier than 2009-07-09 | wuwenguang | 16h |
| 43 | 8.11 | 电话监控动态库 | 14d? | 2009-07-13 | 2009-07-30 | 42 | 22d | 0d | finish no earlier than 2009-07-30 | wuwenguang | 112h |
| 44 | 8.12 | 彩像设置应用程序 | 17d | 2009-07-31 | 2009-08-24 | 43 | 21d |  | start no earlier than 2009-07-31 | wuwenguang wangyinghua | 136h |
| 45 | 8.13 | 系统功能获取IMEI功能 | 3d | 2009-07-08 | 2009-07-10 |  | 41d | 0d | finish no earlier than 2009-07-10 | PanQingjun | 24h |
| 46 | 8.14 | 获取IMSI | 1d? | 2009-07-13 | 2009-07-13 | 45 | 41d | 0d |  | PanQingjun | 8h |
| 47 | 8.15 | 系统时间和当前时区 | 3d | 2009-07-14 | 2009-07-16 | 46 | 41d | 0d |  |  |  |
| 48 | 8.16 | 获取系统心跳 | 2d | 2009-07-17 | 2009-07-20 | 47 | 41d | 0d |  | PanQingjun | 16h |
| 49 | 8.17 | 获取当前语言和磁盘空间 | 3d | 2009-07-21 | 2009-07-23 | 48 | 41d | 0d |  | PanQingjun | 24h |
| 50 | 8.18 | 获取手机漫游状态 | 3d | 2009-07-24 | 2009-07-28 | 49 | 41d | 0d |  | PanQingjun | 24h |
| 51 | 8.19 | 获取背光时间 | 2d | 2009-07-29 | 2009-07-30 | 50 | 41d | 0d |  | PanQingjun | 16h |
| 52 | 8.20 | 获取是否链接USB线的状态标志 | 2d | 2009-07-31 | 2009-08-03 | 51 | 41d |  |  |  |  |
| 53 | 8.21 | Daemon系统伺服程序开发 | 15d | 2009-08-04 | 2009-08-24 | 40 | 21d |  |  | PanQingjun | 120h |
| 54 | 9 | 引擎移植 | 9d? | 2009-08-25 | 2009-09-04 |  | 0d |  | finish no earlier than 2009-09-04 | PanQingjun wuwenguang wangyinghua | 72h |
| 55 | 10 | 彩像软件iPhone平台单元测试 | 10d? | 2009-09-07 | 2009-09-18 | 54 | 0d |  |  | PanQingjun wuwenguang wangyinghua | 80h |
| 56 | 11 | iPhone彩像软件提交测试 | 2d? | 2009-09-21 | 2009-09-22 | 55 | 0d |  |  |  |  |
